# 1819 2TINABCD-01-versie1

How a schedule from MS Project changed from version to version. A marks actual dates.

## Version 1 (saved 2018-10-24, file 1819 2TINABCD-01-versie1.mpp)

Note of the change: Added Business Flow Advanced

| ID | WBS | Task | Duration | Start | Finish | Predecessors | Total float |
| --- | --- | --- | --- | --- | --- | --- | --- |
| 1 | 1 | **Ontwikkeling FutureApp1.0** | 31.5d | 2018-12-05 | 2019-01-24 |  | 0d |
| 2 | 1.1 | **Opstart project** | 3d | 2018-12-05 | 2018-12-07 |  | 0.5d |
| 3 |  | Bespreking klant | 0.5d | 2018-12-05 | 2018-12-05 |  | 0.5d |
| 4 |  | Opstellen van projectplan | 1d | 2018-12-05 | 2018-12-06 | 3 | 0.5d |
| 5 |  | Goedkeuring klant ontvangen en review uitvoeren | 0.5d | 2018-12-07 | 2018-12-07 | 4FS+1d | 0.5d |
| 6 |  | Einde Opstart project | 0d | 2018-12-07 | 2018-12-07 | 3, 4, 5 | 0.5d |
| 7 | 1.2 | **View analyseren** | 2d | 2018-12-10 | 2018-12-11 |  | 0.5d |
| 8 |  | Development view opstellen | 2d | 2018-12-10 | 2018-12-11 | 6 | 0.5d |
| 9 |  | Physical view opstellen | 2d | 2018-12-10 | 2018-12-11 | 6 | 0.5d |
| 10 |  | Process view opstellen | 1d | 2018-12-10 | 2018-12-10 | 6 | 1.5d |
| 11 |  | Logical view opstellen | 1d | 2018-12-10 | 2018-12-10 | 6 | 1.5d |
| 12 |  | Einde View analyseren | 0d | 2018-12-11 | 2018-12-11 | 8, 9, 10, 11 | 0.5d |
| 13 | 1.3 | **Business cases** | 4d | 2018-12-12 | 2018-12-17 |  | 0.5d |
| 14 |  | Business uses cases | 1d | 2018-12-12 | 2018-12-12 | 12 | 3.5d |
| 15 |  | System use cases | 3d | 2018-12-13 | 2018-12-17 | 12 | 0.5d |
| 16 |  | Einde business cases | 0d | 2018-12-17 | 2018-12-17 | 14, 15 | 0.5d |
| 17 | 1.4 | **Sprint 1** | 10d | 2018-12-18 | 2019-01-07 |  | 0d |
| 18 |  | Sprint planning | 0.5d | 2018-12-18 | 2018-12-18 | 16 | 0.5d |
| 19 |  | Software ontwikkelen | 7.5d | 2018-12-18 | 2019-01-03 | 18 | 0.5d |
| 20 |  | Testcases uitschrijven | 7.5d | 2018-12-18 | 2019-01-03 | 18 | 0.5d |
| 21 |  | Sprint afwerken | 0.5d | 2019-01-03 | 2019-01-04 | 19, 20 | 0.5d |
| 22 |  | Software oplever aan klant | 1d | 2019-01-07 | 2019-01-07 | 21 | 0d |
| 23 |  | Einde sprint 1 | 0d | 2019-01-07 | 2019-01-07 | 18, 19, 20, 21, 22 | 0d |
| 24 | 1.5 | **Sprint 2** | 9.5d | 2019-01-08 | 2019-01-21 |  | 0d |
| 25 |  | Sprint planning | 0.5d | 2019-01-08 | 2019-01-08 | 23 | 0d |
| 26 |  | Software ontwikkelen | 7.5d | 2019-01-08 | 2019-01-17 | 25 | 0d |
| 27 |  | Testcases uitschrijven | 7.5d | 2019-01-08 | 2019-01-17 | 25 | 0d |
| 28 |  | Sprint afwerken | 0.5d | 2019-01-18 | 2019-01-18 | 26, 27 | 0d |
| 29 |  | Software oplever aan klant | 1d | 2019-01-18 | 2019-01-21 | 28 | 0d |
| 30 |  | Einde sprint 2 | 0d | 2019-01-21 | 2019-01-21 | 25, 26, 27, 28, 29 | 0d |
| 31 | 1.6 | **Testfase** | 3d | 2019-01-21 | 2019-01-24 |  | 0d |
| 32 |  | Acceptatietesten | 3d | 2019-01-21 | 2019-01-24 | 30 | 0d |
| 33 |  | Exploratory testen | 1d | 2019-01-21 | 2019-01-22 | 30 | 2d |
| 34 |  | Einde Testfase | 0d | 2019-01-24 | 2019-01-24 | 32, 33 | 0d |
| 35 |  | Einde Ontwikkeling FutureApp1.0 | 0d | 2019-01-24 | 2019-01-24 | 34 | 0d |

## Version 2 (data date 2019-01-01, saved 2018-10-24, file 1819 2TINABCD-01-versie3.mpp)

Note of the change: Added Business Flow Advanced

Last finish 2019-01-24 → 2019-01-25 (+1d). Complete tasks 0 → 13.

Changed:

| ID | Task | Start | Finish | Duration | Complete | Total float |
| --- | --- | --- | --- | --- | --- | --- |
| 1 | **Ontwikkeling FutureApp1.0** | 2018-12-05 A | 2019-01-24 → 2019-01-25 (+1d) | 31.5d → 32.5d | 0% → 48% |  |
| 2 | **Opstart project** | 2018-12-05 A | 2018-12-07 A |  | 0% → 100% | 0.5d → none |
| 3 | Bespreking klant | 2018-12-05 A | 2018-12-05 A |  | 0% → 100% | 0.5d → none |
| 4 | Opstellen van projectplan | 2018-12-05 A | 2018-12-06 A |  | 0% → 100% | 0.5d → none |
| 5 | Goedkeuring klant ontvangen en review uitvoeren | 2018-12-07 A | 2018-12-07 A |  | 0% → 100% | 0.5d → none |
| 6 | Einde Opstart project | 2018-12-07 A | 2018-12-07 A |  | 0% → 100% | 0.5d → none |
| 7 | **View analyseren** | 2018-12-10 A | 2018-12-11 A |  | 0% → 100% | 0.5d → none |
| 8 | Development view opstellen | 2018-12-10 A | 2018-12-11 A |  | 0% → 100% | 0.5d → none |
| 9 | Physical view opstellen | 2018-12-10 A | 2018-12-11 A |  | 0% → 100% | 0.5d → none |
| 10 | Process view opstellen | 2018-12-10 A | 2018-12-10 A |  | 0% → 100% | 1.5d → none |
| 11 | Logical view opstellen | 2018-12-10 A | 2018-12-10 A |  | 0% → 100% | 1.5d → none |
| 12 | Einde View analyseren | 2018-12-11 A | 2018-12-11 A |  | 0% → 100% | 0.5d → none |
| 13 | **Business cases** | 2018-12-12 A | 2018-12-17 A |  | 0% → 100% | 0.5d → none |
| 14 | Business uses cases | 2018-12-12 A | 2018-12-12 A |  | 0% → 100% | 3.5d → none |
| 15 | System use cases | 2018-12-13 A | 2018-12-17 A |  | 0% → 100% | 0.5d → none |
| 16 | Einde business cases | 2018-12-17 A | 2018-12-17 A |  | 0% → 100% | 0.5d → none |
| 17 | **Sprint 1** | 2018-12-18 A |  |  | 0% → 79% |  |
| 18 | Sprint planning | 2018-12-18 A | 2018-12-18 A |  | 0% → 100% | 0.5d → none |
| 19 | Software ontwikkelen | 2018-12-18 A |  |  | 0% → 87% |  |
| 20 | Testcases uitschrijven | 2018-12-18 A |  |  | 0% → 87% |  |
| 31 | **Testfase** |  | 2019-01-24 → 2019-01-25 (+1d) | 3d → 4d |  |  |
| 33 | Exploratory testen |  | 2019-01-22 → 2019-01-25 (+3d) | 1d → 4d |  | 2d → 0d |
| 34 | Einde Testfase | 2019-01-24 → 2019-01-25 (+1d) | 2019-01-24 → 2019-01-25 (+1d) |  |  |  |
| 35 | Einde Ontwikkeling FutureApp1.0 | 2019-01-24 → 2019-01-25 (+1d) | 2019-01-24 → 2019-01-25 (+1d) |  |  |  |
